# BKB Project Plan

Schedule from MS Project, 2021-10-25 to 2022-03-11, costs in £, A marks actual dates.

## Calendars

- Standard: Mon-Fri 08:00-12:00, 13:00-17:00; Sat-Sun off.

## Resources

| Resource | Rate |
| --- | --- |
| Robert Lothian | 80 |
| Designer | 40 |
| Coder | 30 |

## Schedule

| ID | WBS | Task | Type | Duration | Start | Finish | Predecessors | Complete | Remaining | Actual finish | Total slack | Constraint | Resources | Work | Actual work | Cost | Actual cost |
| --- | --- | --- | --- | --- | --- | --- | --- | --- | --- | --- | --- | --- | --- | --- | --- | --- | --- |
| 1 | 1 | **Project Initialisation and Analysis** |  | 16h | 2021-10-25 08:00 A | 2021-10-26 17:00 |  | 100% |  | 2021-10-26 12:00 |  |  |  | 11h | 11h | 880 | 880 |
| 2 | 1.1 | Client Interview |  | 1h | 2021-10-25 08:00 A | 2021-10-25 09:00 A |  | 100% |  |  |  |  | Robert Lothian | 1h | 1h | 80 | 80 |
| 3 | 1.2 | Identify client requirement |  | 2h | 2021-10-25 09:00 A | 2021-10-25 11:00 A | 2 | 100% |  |  |  |  | Robert Lothian | 2h | 2h | 160 | 160 |
| 4 | 1.3 | Feasibility Study |  | 2h | 2021-10-25 11:00 A | 2021-10-25 14:00 A | 3 | 100% |  |  |  |  | Robert Lothian | 2h | 2h | 160 | 160 |
| 5 | 1.4 | Project Charter |  | 2h | 2021-10-25 14:00 A | 2021-10-25 17:00 A | 4 | 100% |  |  |  |  | Robert Lothian | 2h | 2h | 160 | 160 |
| 6 | 1.5 | Specification Document |  | 3h | 2021-10-26 08:00 A | 2021-10-26 11:00 A | 5 | 100% |  |  |  |  | Robert Lothian | 3h | 3h | 240 | 240 |
| 7 | 1.6 | Review |  | 1h | 2021-10-26 11:00 A | 2021-10-26 12:00 A | 6 | 100% |  |  |  |  | Robert Lothian | 1h | 1h | 80 | 80 |
| 8 | 1.7 | Initialisation and Analysis Milestone | milestone | 0d | 2021-10-26 12:00 A | 2021-10-26 12:00 A | 7 | 100% |  |  |  |  | Robert Lothian |  |  |  |  |
| 9 | 2 | **Design Phase** |  | 8.38d | 2021-10-26 13:00 A | 2021-11-05 16:00 |  | 99% | 0d |  | 90.12d |  |  | 57h | 57h | 4,560 | 4,560 |
| 10 | 2.1 | Identify user requirements |  | 2h | 2021-10-26 13:00 A | 2021-10-26 15:00 A | 8 | 100% |  |  |  |  | Robert Lothian | 2h | 2h | 160 | 160 |
| 11 | 2.2 | Conduct user survey |  | 6h | 2021-10-26 15:00 A | 2021-10-27 12:00 A | 10 | 100% |  |  |  |  | Robert Lothian | 6h | 6h | 480 | 480 |
| 12 | 2.3 | Create style guide |  | 3h | 2021-10-27 13:00 A | 2021-10-27 16:00 A | 11 | 100% |  |  |  |  | Robert Lothian | 3h | 3h | 240 | 240 |
| 13 | 2.4 | Create sitemap |  | 2h | 2021-10-27 16:00 A | 2021-10-28 09:00 A | 12 | 100% |  |  |  |  | Robert Lothian | 2h | 2h | 160 | 160 |
| 14 | 2.5 | Design wireframes |  | 3h | 2021-10-28 09:00 A | 2021-10-28 12:00 A | 13 | 100% |  |  |  |  | Robert Lothian | 3h | 3h | 240 | 240 |
| 15 | 2.6 | Produce mock up |  | 2h | 2021-10-28 13:00 A | 2021-10-28 15:00 A | 14 | 100% |  |  |  |  | Robert Lothian | 2h | 2h | 160 | 160 |
| 16 | 2.7 | User Feedback |  | 8h | 2021-11-01 08:00 A | 2021-11-01 17:00 A | 15 | 100% |  |  |  | finish no earlier than 2021-11-01 17:00 | Robert Lothian | 8h | 8h | 640 | 640 |
| 17 | 2.8 | Client feedback |  | 8h | 2021-11-02 08:00 A | 2021-11-02 17:00 A | 16 | 100% |  |  |  |  | Robert Lothian | 8h | 8h | 640 | 640 |
| 18 | 2.9 | Analyse feedback |  | 6h | 2021-11-03 08:00 A | 2021-11-03 15:00 A | 17 | 100% |  |  |  |  | Robert Lothian | 6h | 6h | 480 | 480 |
| 19 | 2.10 | Amend designs |  | 8h | 2021-11-03 15:00 A | 2021-11-04 15:00 A | 18 | 100% |  |  |  |  | Robert Lothian | 8h | 8h | 640 | 640 |
| 20 | 2.11 | Produce design specification report |  | 5h | 2021-11-04 15:00 A | 2021-11-05 11:00 A | 19 | 100% |  |  |  | start no earlier than 2021-11-04 08:00 | Robert Lothian | 5h | 5h | 400 | 400 |
| 21 | 2.12 | Create test plan |  | 4h | 2021-11-05 11:00 A | 2021-11-05 16:00 A | 20 | 100% |  |  |  |  | Robert Lothian | 4h | 4h | 320 | 320 |
| 22 | 2.13 | Design Milestone | milestone | 0d | 2021-11-05 16:00 | 2021-11-05 16:00 | 21 |  |  |  | 90.12d |  | Robert Lothian |  |  |  |  |
| 23 | 3 | **Implementation stage** |  | 7.75d | 2021-11-05 16:00 A | 2021-11-17 14:00 A |  | 100% |  |  |  |  |  | 62h | 62h | 4,960 | 4,960 |
| 24 | 3.1 | Source images |  | 4h | 2021-11-05 16:00 A | 2021-11-08 11:00 A | 22 | 100% |  |  |  |  | Robert Lothian | 4h | 4h | 320 | 320 |
| 25 | 3.2 | Build desktop site |  | 3d | 2021-11-08 11:00 A | 2021-11-11 11:00 A | 24 | 100% |  |  |  |  | Robert Lothian | 24h | 24h | 1,920 | 1,920 |
| 26 | 3.3 | Build mobile site |  | 2d | 2021-11-11 11:00 A | 2021-11-15 11:00 A | 25 | 100% |  |  |  |  | Robert Lothian | 16h | 16h | 1,280 | 1,280 |
| 27 | 3.4 | Build tablet site |  | 1d | 2021-11-15 11:00 A | 2021-11-16 11:00 A | 26 | 100% |  |  |  |  | Robert Lothian | 8h | 8h | 640 | 640 |
| 28 | 3.5 | Impliment security |  | 8h | 2021-11-16 11:00 A | 2021-11-17 11:00 A | 27 | 100% |  |  |  |  | Robert Lothian | 8h | 8h | 640 | 640 |
| 29 | 3.6 | Client feedback |  | 2h | 2021-11-17 11:00 A | 2021-11-17 14:00 A | 28 | 100% |  |  |  |  | Robert Lothian | 2h | 2h | 160 | 160 |
| 30 | 3.7 | Implementation Milestone | milestone | 0d | 2021-11-17 14:00 A | 2021-11-17 14:00 A | 29 | 100% |  |  |  | start no earlier than 2021-09-16 08:00 | Robert Lothian |  |  |  |  |

| ID | WBS | Task | Type | Duration | Start | Finish | Predecessors | Complete | Actual finish | Constraint | Resources | Work | Actual work | Cost | Actual cost |
| --- | --- | --- | --- | --- | --- | --- | --- | --- | --- | --- | --- | --- | --- | --- | --- |
| 31 | 4 | **Testing stage** |  | 97h | 2021-11-17 14:00 A | 2021-12-03 15:00 |  | 100% | 2022-03-10 09:00 |  |  | 97h | 97h | 7,760 | 7,760 |
| 32 | 4.1 | Integration testing |  | 8h | 2021-11-17 14:00 A | 2021-11-18 14:00 A | 30 | 100% |  |  | Robert Lothian | 8h | 8h | 640 | 640 |
| 33 | 4.2 | Systems testing |  | 8h | 2021-11-18 14:00 A | 2021-11-19 14:00 A | 32 | 100% |  |  | Robert Lothian | 8h | 8h | 640 | 640 |
| 34 | 4.3 | Database testing |  | 8h | 2021-11-19 14:00 A | 2021-11-22 14:00 A | 33 | 100% |  |  | Robert Lothian | 8h | 8h | 640 | 640 |
| 35 | 4.4 | Security testing |  | 48h | 2021-11-22 14:00 A | 2022-03-04 17:00 A | 34 | 100% |  |  | Robert Lothian | 48h | 48h | 3,840 | 3,840 |
| 36 | 4.5 | Acceptance testing |  | 3h | 2022-03-07 08:00 A | 2022-03-07 11:00 A | 35 | 100% |  |  | Robert Lothian | 3h | 3h | 240 | 240 |
| 37 | 4.6 | Fix errors |  | 2d | 2022-03-07 11:00 A | 2022-03-09 11:00 A | 36 | 100% |  |  | Robert Lothian | 16h | 16h | 1,280 | 1,280 |
| 38 | 4.7 | Complete test plan |  | 4h | 2022-03-09 11:00 A | 2022-03-09 16:00 A | 37 | 100% |  |  | Robert Lothian | 4h | 4h | 320 | 320 |
| 39 | 4.8 | Deploy site |  | 2h | 2022-03-09 16:00 A | 2022-03-10 09:00 A | 38 | 100% |  |  | Robert Lothian | 2h | 2h | 160 | 160 |
| 40 | 4.9 | Testing Milestone | milestone | 0h | 2022-03-10 09:00 A | 2022-03-10 09:00 A | 39 | 100% |  |  | Robert Lothian |  |  |  |  |
| 41 | 5 | Evaluation stage |  | 15h? | 2021-11-26 08:00 A | 2021-11-29 16:00 A |  | 100% |  | start no earlier than 2021-11-26 08:00 | Robert Lothian | 15h | 15h | 1,200 | 1,200 |
| 42 | 6 | Evaluate project management |  | 3h | 2022-03-10 09:00 A | 2022-03-10 12:00 A | 40 | 100% |  |  | Robert Lothian | 3h | 3h | 240 | 240 |
| 43 | 7 | Evaluate designs |  | 3h | 2022-03-10 13:00 A | 2022-03-10 16:00 A | 42 | 100% |  |  | Robert Lothian | 3h | 3h | 240 | 240 |
| 44 | 8 | Evaluate website development |  | 3h | 2022-03-10 16:00 A | 2022-03-11 10:00 A | 43 | 100% |  |  | Robert Lothian | 3h | 3h | 240 | 240 |
| 45 | 9 | Evaluate analysis |  | 3h | 2022-03-11 10:00 A | 2022-03-11 14:00 A | 44 | 100% |  |  | Robert Lothian | 3h | 3h | 240 | 240 |
| 46 | 10 | Future recommendation |  | 3h | 2022-03-11 14:00 A | 2022-03-11 17:00 A | 45 | 100% |  |  | Robert Lothian | 3h | 3h | 240 | 240 |
| 47 | 11 | Evaluation milestone | milestone | 0h | 2022-03-11 17:00 A | 2022-03-11 17:00 A | 46 | 100% |  |  | Robert Lothian |  |  |  |  |
